How a schedule from a web Gantt chart changed from version to version. A marks actual dates.

## Version 1 (saved 2024-12-17)

| ID | WBS | Task | Duration | Start | Finish | Complete |
| --- | --- | --- | --- | --- | --- | --- |
| 2 |  | 项目确认会议 | 1d | 2024-12-05 | 2024-12-05 | 100% |
| 3 | 2 | **部门内部准备** | 6d | 2024-12-06 | 2024-12-12 | 100% |
| 4 | 2.1 | **财务部信息化组** | 5d | 2024-12-06 | 2024-12-11 | 100% |
| 5 |  | 测试环境任务配置与角色权限管理 | 1d | 2024-12-06 | 2024-12-06 | 100% |
| 6 |  | 设备巡检模块功能修改 | 2d | 2024-12-09 | 2024-12-10 | 100% |
| 7 |  | 设备报修模块功能修改 | 1d | 2024-12-11 | 2024-12-11 | 100% |
| 8 |  | 设备技术协议及说明书上传 | 1d | 2024-12-11 | 2024-12-11 | 100% |
| 9 |  | 几条测试数据维护 | 1d | 2024-12-11 | 2024-12-11 | 100% |
| 10 | 2.2 | **机动部** | 6d | 2024-12-06 | 2024-12-12 | 100% |
| 11 |  | 设备分类与编码规则 | 5d | 2024-12-06 | 2024-12-11 | 100% |
| 12 |  | 测试服设备与检验方案维护 | 1d | 2024-12-12 | 2024-12-12 | 100% |
| 13 |  | 系统培训会议 | 1d | 2024-12-16 | 2024-12-16 |  |
| 14 |  | 系统测试环境使用 | 4d | 2024-12-13 | 2024-12-17 | 80% |
| 15 |  | 测试环境上线问题反馈汇总与改进 | 1d | 2024-12-17 | 2024-12-17 | 70% |
| 16 |  | 功能优化及重新测试 | 2d | 2024-12-17 | 2024-12-18 |  |
| 17 | 7 | **功能模块上线正式生产环境** | 12d | 2024-12-16 | 2024-12-28 | 7% |
| 18 |  | 正式环境小程序、分类等配置 | 1d | 2024-12-16 | 2024-12-16 | 100% |
| 19 |  | 正式环境期初数据准备与导入 | 3d | 2024-12-16 | 2024-12-18 |  |
| 20 |  | 正式环境设备管理运行维护、问题处理 | 10d | 2024-12-18 | 2024-12-28 |  |
| 21 |  | 异常数据分析、制定相应考核标准 | 3d | 2024-12-26 | 2024-12-28 |  |

## Version 2 (saved 2024-12-23)

Last finish stays 2024-12-28.

Changed:

| ID | Task | Complete |
| --- | --- | --- |
| 17 | **功能模块上线正式生产环境** | 7% → 11% |
| 19 | 正式环境期初数据准备与导入 | 0% → 20% |

## Version 3 (saved 2024-12-24)

Last finish 2024-12-28 → 2024-12-31 (+3d). Complete tasks 9 → 13.

Added:

| ID | Task | Duration | Start | Finish |
| --- | --- | --- | --- | --- |
| 13 | 沟通会议 | 1d | 2024-12-24 | 2024-12-24 |

Changed:

| ID | Task | Start | Finish | Duration | Complete |
| --- | --- | --- | --- | --- | --- |
| 3 | **部门内部准备** |  | 2024-12-12 → 2024-12-24 (+12d) | 6d → 16d |  |
| 10 | **机动部** |  | 2024-12-12 → 2024-12-24 (+12d) | 6d → 16d |  |
| 14 | 系统测试环境使用 |  |  |  | 80% → 100% |
| 15 | 测试环境上线问题反馈汇总与改进 |  |  |  | 70% → 100% |
| 16 | 功能优化及重新测试 |  |  |  | 0% → 100% |
| 17 | 系统培训会议 | 2024-12-16 → 2024-12-25 (+9d) | 2024-12-16 → 2024-12-25 (+9d) |  |  |
| 18 | **功能模块上线正式生产环境** |  | 2024-12-28 → 2024-12-31 (+3d) | 12d → 14d | 11% → 26% |
| 19 | 正式环境小程序、分类等配置 |  | 2024-12-16 → 2024-12-18 (+2d) | 1d → 3d |  |
| 20 | 正式环境期初数据准备与导入 |  | 2024-12-18 → 2024-12-21 (+3d) | 3d → 6d | 20% → 40% |
| 21 | 正式环境设备管理运行维护、问题处理 |  | 2024-12-28 → 2024-12-31 (+3d) | 10d → 12d |  |
| 22 | 异常数据分析、制定相应考核标准 |  | 2024-12-28 → 2024-12-31 (+3d) | 3d → 5d |  |
